Schedule from MS Project, 2016-03-23 to 2016-05-26.

## Calendars

- 标准: Mon-Fri 08:00-12:00, 13:00-17:00; Sat-Sun off.

## Resources

| Resource | Group |
| --- | --- |
| 朱雷 | 逻辑2 |
| 刘彦鹏 | 逻辑2 |
| 岳文铎 | UI |
| 杨立坤 | 逻辑1 |
| 李冬冬 | 逻辑1 |
| 崔顺利 | 逻辑1 |
| 吕福龙 | 逻辑2 |
| 杨煜 | 逻辑2 |
| 助手 |  |
| 提测 |  |
| 童瑞 | 逻辑2 |
| 黄梓洲 | 逻辑1 |
| 卢洋洋 | 逻辑1 |
| 刘存明 | 逻辑1 |
| 产品 |  |
| 李天祺 | UI |
| 夏润凉 | UI |
| 杨力 | UI |
| 祁媛媛 | UI |
| 郭瑞超 | UI |
| 钟兴志 | UI |
| 申艳丽 | UI |
| 吴鹏 | UI |
| 骆天宇 | UI |
| 裴希凯 |  |
| 刘涛 |  |
| 白盒 |  |
| 岩谷 |  |
| l卢洋洋 |  |
| 陈晓宇 |  |
| 提测‘ |  |
| 103 |  |

## Schedule

| ID | WBS | Task | Type | Duration | Start | Finish | Predecessors | Total slack | Free slack | Constraint | Resources | Work |
| --- | --- | --- | --- | --- | --- | --- | --- | --- | --- | --- | --- | --- |
| 1 | 1 | **4月版本剩余工作** |  | 3d | 2016-03-23 | 2016-03-25 |  | 26d |  |  |  | 128h |
| 2 | 1.1 | 组队白盒测试 |  | 3d | 2016-03-23 | 2016-03-25 |  | 26d | 0d |  | 黄梓洲 | 24h |
| 3 | 1.2 | 组队QA、Bug |  | 3d | 2016-03-23 | 2016-03-25 |  | 43d |  |  | 崔顺利 | 24h |
| 4 | 1.3 | 组队QA、Bug |  | 3d | 2016-03-23 | 2016-03-25 |  | 40d | 0d |  | 卢洋洋 | 24h |
| 5 | 1.4 | 组队QA、Bug |  | 2d | 2016-03-23 | 2016-03-24 |  | 44d |  |  | 黄梓洲 | 16h |
| 6 | 1.5 | 可视化开宝箱QA、Bug |  | 3d | 2016-03-23 | 2016-03-25 |  | 43d |  |  | 岳文铎 | 24h |
| 7 | 1.6 | 手机社区QA、Bug |  | 1d | 2016-03-23 | 2016-03-23 |  | 45d |  |  | 朱雷 | 8h |
| 8 | 1.7 | 手机社区QA、Bug |  | 1d | 2016-03-23 | 2016-03-23 |  | 45d |  |  | 杨煜 | 8h |
| 9 | 2 | **5月版本** |  | 27d? | 2016-03-23 | 2016-04-28 |  | -2d | 0d |  |  | 1816h |
| 10 | 2.1 | 版本开始时间 | milestone | 0d | 2016-03-23 | 2016-03-23 |  | 0d |  | must start on 2016-03-23 |  |  |
| 11 | 2.2 | **跨区组队跑环一期+飞檐走壁** |  | 27d? | 2016-03-23 | 2016-04-28 |  | -2d | 0d |  |  | 968h |
| 12 | 2.2.1 | 需分，设计 |  | 2d | 2016-03-24 | 2016-03-25 |  | -3d | 0d | start no earlier than 2016-03-24 | 刘彦鹏 | 16h |
| 13 | 2.2.2 | 需分，设计 |  | 2d | 2016-03-24 | 2016-03-25 |  | -1d | 0d | start no earlier than 2016-03-24 | 崔顺利 | 16h |
| 14 | 2.2.3 | 队伍相关接口，结构体定义 |  | 1d | 2016-03-28 | 2016-03-28 | 12 | -3d | 0d |  | 刘彦鹏 | 8h |
| 15 | 2.2.4 | 队伍服务器 |  | 2d | 2016-03-29 | 2016-03-30 | 14 | -3d | 0d |  | 刘彦鹏 | 16h |
| 16 | 2.2.5 | 队伍管理 |  | 2d | 2016-03-31 | 2016-04-01 | 15 | -3d | 0d |  | 刘彦鹏 | 16h |
| 17 | 2.2.6 | 队伍邀请 |  | 1d | 2016-04-04 | 2016-04-04 | 16 | -3d | 0d |  | 刘彦鹏 | 8h |
| 18 | 2.2.7 | 主动加入 |  | 1d | 2016-04-05 | 2016-04-05 | 17 | -3d | 0d |  | 刘彦鹏 | 8h |
| 19 | 2.2.8 | 随机加入 |  | 1d | 2016-04-06 | 2016-04-06 | 18 | -3d | 0d |  | 刘彦鹏 | 8h |
| 20 | 2.2.9 | 队伍列表 |  | 2d | 2016-04-07 | 2016-04-08 | 19 | -3d | 0d |  | 刘彦鹏 | 16h |
| 21 | 2.2.10 | 集结逻辑 |  | 1d | 2016-04-11 | 2016-04-11 | 20 | -3d | 0d |  | 刘彦鹏 | 8h |
| 22 | 2.2.11 | 集结3D跟随 |  | 2d | 2016-04-12 | 2016-04-13 | 21 | -3d | 0d |  | 刘彦鹏 | 16h |
| 23 | 2.2.12 | 队伍操作（队长退出，转交，解散） |  | 2d | 2016-04-14 | 2016-04-15 | 22 | -3d | 0d |  | 刘彦鹏 | 16h |
| 24 | 2.2.13 | 队伍聊天 |  | 2d | 2016-03-23 | 2016-03-24 |  | 15d | 0d |  | 杨立坤 | 16h |
| 25 | 2.2.14 | 最近组队成员列表 |  | 2d | 2016-03-23 | 2016-03-24 |  | 44d |  |  | 李冬冬 | 16h |
| 26 | 2.2.15 | 任务系统接口，结构体定义 |  | 1d | 2016-03-28 | 2016-03-28 | 13 | -1d | 0d | start no earlier than 2016-03-24 | 崔顺利 | 8h |
| 27 | 2.2.16 | 任务系统 |  | 3d | 2016-03-29 | 2016-03-31 | 26 | -1d | 0d |  | 崔顺利 | 24h |
| 28 | 2.2.17 | 任务NPC，剧情NPC处理 |  | 2d | 2016-04-01 | 2016-04-04 | 27 | -1d | 0d |  | 崔顺利 | 16h |
| 29 | 2.2.18 | 任务-钓鱼 |  | 2d | 2016-04-05 | 2016-04-06 | 28 | 3d | 0d |  | 李冬冬 | 16h |
| 30 | 2.2.19 | 任务-捡袋子 |  | 2d | 2016-04-07 | 2016-04-08 | 29 | 3d | 0d |  | 李冬冬 | 16h |
| 31 | 2.2.20 | 任务-采药 |  | 1d | 2016-04-11 | 2016-04-11 | 30 | 3d | 0d |  | 李冬冬 | 8h |
| 32 | 2.2.21 | 任务-孔明灯 |  | 2d | 2016-04-05 | 2016-04-06 | 28 | -1d | 0d |  | 崔顺利 | 16h |
| 33 | 2.2.22 | 任务-寻宝 |  | 2d | 2016-04-07 | 2016-04-08 | 32 | -1d | 0d |  | 崔顺利 | 16h |
| 34 | 2.2.23 | 任务-飞檐走壁 |  | 1d | 2016-04-11 | 2016-04-11 | 33 | -1d | 0d |  | 崔顺利 | 8h |
| 35 | 2.2.24 | 任务-许愿 |  | 2d | 2016-04-12 | 2016-04-13 | 34 | -1d | 0d |  | 崔顺利 | 16h |
| 36 | 2.2.25 | 飞檐走壁-轻功值 |  | 2d | 2016-04-06 | 2016-04-07 | 112 | 3d | 0d | start no earlier than 2016-03-24 | 刘存明 | 16h |
| 37 | 2.2.26 | 飞檐走壁-集仙物活动 |  | 2d | 2016-04-08 | 2016-04-11 | 36 | 3d | 0d |  | 刘存明 | 16h |

| ID | WBS | Task | Type | Duration | Start | Finish | Predecessors | Total slack | Free slack | Constraint | Resources | Work |
| --- | --- | --- | --- | --- | --- | --- | --- | --- | --- | --- | --- | --- |
| 38 | 2.2.27 | **3D** |  | 15d | 2016-03-23 | 2016-04-12 |  | 1d |  |  |  | 120h |
| 39 | 2.2.27.1 | 快速移动的性能优化，视野延迟控制 |  | 4d | 2016-03-23 | 2016-03-28 |  | 1d | 0d |  | 岳文铎 | 32h |
| 40 | 2.2.27.2 | 视野范围内角色加载性能优化，逐步加载 |  | 4d | 2016-03-29 | 2016-04-01 | 39 | 1d | 0d |  | 岳文铎 | 32h |
| 41 | 2.2.27.3 | 专有格子 |  | 2d | 2016-04-04 | 2016-04-05 | 40 | 1d | 0d |  | 岳文铎 | 16h |
| 42 | 2.2.27.4 | 跟随 |  | 3d | 2016-04-06 | 2016-04-08 | 41 | 1d | 0d |  | 岳文铎 | 24h |
| 43 | 2.2.27.5 | 磨效果 |  | 2d | 2016-04-11 | 2016-04-12 | 42 | 1d | 0d |  | 岳文铎 | 16h |
| 44 | 2.2.28 | **UI** |  | 11d? | 2016-03-23 | 2016-04-06 |  | 5d |  |  |  | 152h |
| 45 | 2.2.28.1 | 需分、设计 |  | 2d | 2016-03-23 | 2016-03-24 |  | 6d | 0d |  | 夏润凉 | 16h |
| 46 | 2.2.28.2 | 需分、设计 |  | 2d | 2016-03-25 | 2016-03-28 | 139 | 5d | 0d |  | 申艳丽 | 16h |
| 47 | 2.2.28.3 | 成员列表 |  | 2d | 2016-03-25 | 2016-03-28 | 45 | 6d | 0d |  | 夏润凉 | 16h |
| 48 | 2.2.28.4 | 任务进度、追踪 |  | 1d? | 2016-03-29 | 2016-03-29 | 47 | 6d | 0d |  | 夏润凉 | 8h |
| 49 | 2.2.28.5 | 邀请、跑环介绍 |  | 2d | 2016-03-29 | 2016-03-30 | 46 | 5d | 0d |  | 申艳丽 | 16h |
| 50 | 2.2.28.6 | 小队列表 |  | 2d | 2016-03-30 | 2016-03-31 | 48 | 6d | 0d |  | 夏润凉 | 16h |
| 51 | 2.2.28.7 | 任务 |  | 2d | 2016-04-01 | 2016-04-04 | 50 | 6d | 0d |  | 夏润凉 | 16h |
| 52 | 2.2.28.8 | 玩法 |  | 2d | 2016-03-31 | 2016-04-01 | 49 | 5d | 0d |  | 申艳丽 | 16h |
| 53 | 2.2.28.9 | 小队频道 |  | 2d | 2016-04-04 | 2016-04-05 | 52 | 5d | 0d |  | 申艳丽 | 16h |
| 54 | 2.2.28.10 | 集仙物 |  | 1d? | 2016-04-06 | 2016-04-06 | 53 | 5d | 0d |  | 申艳丽 | 8h |
| 55 | 2.2.28.11 | 其他 |  | 1d? | 2016-04-05 | 2016-04-05 | 51 | 6d | 0d |  | 夏润凉 | 8h |
| 56 | 2.2.29 | 主流程跑通 | milestone | 0d | 2016-04-08 | 2016-04-08 |  | 34d |  | start no earlier than 2016-04-08 |  |  |
| 57 | 2.2.30 | 联调 |  | 4d | 2016-04-18 | 2016-04-21 | 23 | -3d | 0d |  | 刘彦鹏 | 32h |
| 58 | 2.2.31 | 联调 |  | 4d | 2016-04-14 | 2016-04-19 | 35 | -1d | 0d |  | 崔顺利 | 32h |
| 59 | 2.2.32 | 联调 |  | 2d | 2016-04-12 | 2016-04-13 | 37 | 3d |  |  | 刘存明 | 16h |
| 60 | 2.2.33 | 联调 |  | 2d | 2016-03-25 | 2016-03-28 | 24 | 15d |  |  | 杨立坤 | 16h |
| 61 | 2.2.34 | 联调 |  | 2d | 2016-04-12 | 2016-04-13 | 31 | 3d |  |  | 李冬冬 | 16h |
| 62 | 2.2.35 | 联调 |  | 3d | 2016-04-06 | 2016-04-08 | 55 | 6d |  |  | 夏润凉 | 24h |
| 63 | 2.2.36 | 联调 |  | 3d | 2016-04-07 | 2016-04-11 | 54 | 5d |  |  | 申艳丽 | 24h |
| 64 | 2.2.37 | 联调 |  | 3d | 2016-04-13 | 2016-04-15 | 43 | 1d |  |  | 岳文铎 | 24h |
| 65 | 2.2.38 | 提测 | milestone | 0d | 2016-04-18 | 2016-04-18 | 57, 58, 59, 60, 62, 64, 61, 63 | -3d | 0d | must finish on 2016-04-18 | 提测 |  |
| 66 | 2.2.39 | QA、Bug |  | 3d | 2016-04-19 | 2016-04-21 | 65 | 24d |  |  | 刘彦鹏 | 24h |
| 67 | 2.2.40 | QA、Bug |  | 2d | 2016-04-19 | 2016-04-20 | 65 | 25d |  |  | 刘存明 | 16h |
| 68 | 2.2.41 | QA、Bug |  | 2d | 2016-04-19 | 2016-04-20 | 65 | 25d |  |  | 杨立坤 | 16h |
| 69 | 2.2.42 | QA、Bug |  | 1d? | 2016-04-19 | 2016-04-19 | 65 | 26d |  |  | 李冬冬 | 8h |
| 70 | 2.2.43 | QA、Bug |  | 1d? | 2016-04-19 | 2016-04-19 | 65 | 26d |  |  | 岳文铎 | 8h |
| 71 | 2.2.44 | QA、Bug |  | 1d? | 2016-04-19 | 2016-04-19 | 65 | 26d |  |  | 夏润凉 | 8h |
| 72 | 2.2.45 | QA、Bug |  | 1d? | 2016-04-19 | 2016-04-19 | 65 | 26d |  |  | 申艳丽 | 8h |
| 73 | 2.2.46 | 白盒测试 |  | 8d | 2016-04-19 | 2016-04-28 | 65 | 19d |  |  | 黄梓洲 | 64h |

| ID | WBS | Task | Duration | Start | Finish | Predecessors | Total slack | Free slack | Resources | Work |
| --- | --- | --- | --- | --- | --- | --- | --- | --- | --- | --- |
| 74 | 2.3 | **周年庆回馈活动** | 20d? | 2016-03-23 | 2016-04-19 |  | 3d |  |  | 528h |
| 75 | 2.3.1 | **逻辑** | 17d | 2016-03-23 | 2016-04-14 |  | 3d |  |  | 312h |
| 76 | 2.3.1.1 | **活动** | 4d | 2016-03-24 | 2016-03-29 |  | 26d |  |  | 32h |
| 77 | 2.3.1.1.1 | 需分设计 | 1d | 2016-03-24 | 2016-03-24 | 7 | 26d | 0d | 朱雷 | 8h |
| 78 | 2.3.1.1.2 | 活动周期控制 | 1d | 2016-03-25 | 2016-03-25 | 77 | 26d | 0d | 朱雷 | 8h |
| 79 | 2.3.1.1.3 | 每日登录赠送、回流 | 1d | 2016-03-28 | 2016-03-28 | 78 | 26d | 0d | 朱雷 | 8h |
| 80 | 2.3.1.1.4 | 联调 | 1d | 2016-03-29 | 2016-03-29 | 79 | 26d | 0d | 朱雷 | 8h |
| 81 | 2.3.1.2 | **摇奖** | 12d | 2016-03-30 | 2016-04-14 |  | 26d |  |  | 96h |
| 82 | 2.3.1.2.1 | 需分、设计 | 2d | 2016-03-30 | 2016-03-31 | 80 | 26d | 0d | 朱雷 | 16h |
| 83 | 2.3.1.2.2 | 框架、配置 | 1d | 2016-04-01 | 2016-04-01 | 82 | 26d | 0d | 朱雷 | 8h |
| 84 | 2.3.1.2.3 | 摇奖周期 | 1d | 2016-04-04 | 2016-04-04 | 83 | 26d | 0d | 朱雷 | 8h |
| 85 | 2.3.1.2.4 | 购买奖券，查看奖券 | 1d | 2016-04-05 | 2016-04-05 | 84 | 26d | 0d | 朱雷 | 8h |
| 86 | 2.3.1.2.5 | 开奖，发奖 | 2d | 2016-04-06 | 2016-04-07 | 85 | 26d | 0d | 朱雷 | 16h |
| 87 | 2.3.1.2.6 | 广播 | 1d | 2016-04-08 | 2016-04-08 | 86 | 26d | 0d | 朱雷 | 8h |
| 88 | 2.3.1.2.7 | DB存储 | 2d | 2016-04-11 | 2016-04-12 | 87 | 26d | 0d | 朱雷 | 16h |
| 89 | 2.3.1.2.8 | 联调 | 2d | 2016-04-13 | 2016-04-14 | 88 | 26d | 0d | 朱雷 | 16h |
| 90 | 2.3.1.3 | **抽奖** | 7d | 2016-03-23 | 2016-03-31 |  | 30d | 0d |  | 56h |
| 91 | 2.3.1.3.1 | 需分、设计 | 2d | 2016-03-23 | 2016-03-24 |  | 33d | 0d | 杨立坤 | 16h |
| 92 | 2.3.1.3.2 | 框架、配置 | 1d | 2016-03-25 | 2016-03-25 | 91 | 33d | 0d | 杨立坤 | 8h |
| 93 | 2.3.1.3.3 | 抽奖逻辑，过程锁定 | 2d | 2016-03-28 | 2016-03-29 | 92 | 33d | 0d | 杨立坤 | 16h |
| 94 | 2.3.1.3.4 | 抽10次，广播 | 1d | 2016-03-30 | 2016-03-30 | 93 | 33d | 0d | 杨立坤 | 8h |
| 95 | 2.3.1.3.5 | 联调 | 1d | 2016-03-31 | 2016-03-31 | 94 | 33d |  | 杨立坤 | 8h |
| 96 | 2.3.1.4 | **拍卖** | 6d | 2016-04-01 | 2016-04-08 |  | 30d |  |  | 48h |
| 97 | 2.3.1.4.1 | 需分、设计 | 2d | 2016-04-01 | 2016-04-04 | 90 | 33d | 0d | 杨立坤 | 16h |
| 98 | 2.3.1.4.2 | 查看、竞拍、返还、结束拍卖 | 2d | 2016-04-05 | 2016-04-06 | 97 | 33d | 0d | 杨立坤 | 16h |
| 99 | 2.3.1.4.3 | 活动广播、我的拍卖（当前的拍卖）、名人榜 | 1d | 2016-04-07 | 2016-04-07 | 98 | 33d | 0d | 杨立坤 | 8h |
| 100 | 2.3.1.4.4 | 联调 | 1d | 2016-04-08 | 2016-04-08 | 99 | 33d |  | 杨立坤 | 8h |

| ID | WBS | Task | Type | Duration | Start | Finish | Predecessors | Total slack | Free slack | Resources | Work |
| --- | --- | --- | --- | --- | --- | --- | --- | --- | --- | --- | --- |
| 101 | 2.3.1.5 | **生日币商城** |  | 10d | 2016-03-23 | 2016-04-05 |  | 3d |  |  | 80h |
| 102 | 2.3.1.5.1 | 需分、设计 |  | 2d | 2016-03-23 | 2016-03-24 |  | 36d | 0d | 刘存明 | 16h |
| 103 | 2.3.1.5.2 | **生日币兑换** |  | 5d | 2016-03-25 | 2016-03-31 |  | 33d |  |  | 40h |
| 104 | 2.3.1.5.2.1 | 框架、配置 |  | 1d | 2016-03-25 | 2016-03-25 | 102 | 36d | 0d | 刘存明 | 8h |
| 105 | 2.3.1.5.2.2 | 货架刷新，拉取商品列表 |  | 1d | 2016-03-28 | 2016-03-28 | 104 | 36d | 0d | 刘存明 | 8h |
| 106 | 2.3.1.5.2.3 | 兑换，限量 |  | 1d | 2016-03-29 | 2016-03-29 | 105 | 36d | 0d | 刘存明 | 8h |
| 107 | 2.3.1.5.2.4 | 限量存储DB，清理 |  | 1d | 2016-03-30 | 2016-03-30 | 106 | 36d | 0d | 刘存明 | 8h |
| 108 | 2.3.1.5.2.5 | 联调 |  | 1d | 2016-03-31 | 2016-03-31 | 107 | 36d | 0d | 刘存明 | 8h |
| 109 | 2.3.1.5.3 | **生日币抵用** |  | 3d | 2016-04-01 | 2016-04-05 |  | 3d |  |  | 24h |
| 110 | 2.3.1.5.3.1 | 配置，拉取商品列表 |  | 1d | 2016-04-01 | 2016-04-01 | 108 | 36d | 0d | 刘存明 | 8h |
| 111 | 2.3.1.5.3.2 | 购买 |  | 1d | 2016-04-04 | 2016-04-04 | 110 | 36d | 0d | 刘存明 | 8h |
| 112 | 2.3.1.5.3.3 | 联调 |  | 1d | 2016-04-05 | 2016-04-05 | 111 | 36d |  | 刘存明 | 8h |
| 113 | 2.3.2 | **UI** |  | 9d? | 2016-03-23 | 2016-04-04 |  | 31d |  |  | 128h |
| 114 | 2.3.2.1 | 需分、设计 |  | 2d | 2016-03-23 | 2016-03-24 |  | 34d | 0d | 钟兴志 | 16h |
| 115 | 2.3.2.2 | 需分、设计 |  | 2d | 2016-03-24 | 2016-03-25 | 8 | 32d | 0d | 杨煜 | 16h |
| 116 | 2.3.2.3 | 入口，活动界面 |  | 2d | 2016-03-28 | 2016-03-29 | 115 | 32d | 0d | 杨煜 | 16h |
| 117 | 2.3.2.4 | 大礼盒 |  | 2d | 2016-03-25 | 2016-03-28 | 114 | 34d | 0d | 钟兴志 | 16h |
| 118 | 2.3.2.5 | 摇摇乐（除更多中奖信息） |  | 2d | 2016-03-29 | 2016-03-30 | 117 | 34d | 0d | 钟兴志 | 16h |
| 119 | 2.3.2.6 | 摇摇乐：更多中奖信息 |  | 1d? | 2016-03-30 | 2016-03-30 | 116 | 32d | 0d | 杨煜 | 8h |
| 120 | 2.3.2.7 | 神拍手 |  | 2d | 2016-03-31 | 2016-04-01 | 119 | 32d | 0d | 杨煜 | 16h |
| 121 | 2.3.2.8 | 必抢货：兑换、抵用 |  | 2d | 2016-03-31 | 2016-04-01 | 118 | 34d | 0d | 钟兴志 | 16h |
| 122 | 2.3.2.9 | 必抢货：预览、购买 |  | 1d? | 2016-04-04 | 2016-04-04 | 121 | 34d | 0d | 钟兴志 | 8h |
| 123 | 2.3.3 | 联调 |  | 3d | 2016-04-05 | 2016-04-07 | 122 | 31d | 1d | 钟兴志 | 24h |
| 124 | 2.3.4 | 联调 |  | 3d | 2016-04-04 | 2016-04-06 | 120 | 32d | 6d | 杨煜 | 24h |
| 125 | 2.3.5 | 提测 | milestone | 0d | 2016-04-14 | 2016-04-14 | 123, 89, 100, 112, 124 | 26d | 0d | 提测 |  |
| 126 | 2.3.6 | QA、Bug |  | 3d | 2016-04-15 | 2016-04-19 | 125 | 26d |  | 朱雷 | 24h |
| 127 | 2.3.7 | QA、Bug |  | 2d | 2016-04-15 | 2016-04-18 | 125 | 27d |  | 杨立坤 | 16h |

| ID | WBS | Task | Type | Duration | Start | Finish | Predecessors | Total slack | Free slack | Resources | Work |
| --- | --- | --- | --- | --- | --- | --- | --- | --- | --- | --- | --- |
| 128 | 2.4 | **跨区社区优化** |  | 11d | 2016-03-23 | 2016-04-06 |  | 5d |  |  | 80h |
| 129 | 2.4.1 | **去找他** |  | 11d | 2016-03-23 | 2016-04-06 |  | 35d |  |  | 48h |
| 130 | 2.4.1.1 | **逻辑** |  | 4d | 2016-03-31 | 2016-04-05 |  | 35d |  |  | 32h |
| 131 | 2.4.1.1.1 | 需分、设计 |  | 1d | 2016-03-31 | 2016-03-31 | 160 | 35d | 0d | 卢洋洋 | 8h |
| 132 | 2.4.1.1.2 | 玩家位置统计：汇总，变更同步，超时删除 |  | 2d | 2016-04-01 | 2016-04-04 | 131 | 35d | 0d | 卢洋洋 | 16h |
| 133 | 2.4.1.1.3 | 追踪流程 |  | 1d | 2016-04-05 | 2016-04-05 | 132 | 35d | 0d | 卢洋洋 | 8h |
| 134 | 2.4.1.2 | UI |  | 1d | 2016-03-23 | 2016-03-23 |  | 36d | 0d | 祁媛媛 | 8h |
| 135 | 2.4.1.3 | 联调 |  | 1d | 2016-04-06 | 2016-04-06 | 133 | 35d | 0d | 卢洋洋 | 8h |
| 136 | 2.4.1.4 | 提测 | milestone | 0d | 2016-04-06 | 2016-04-06 | 135 | 35d |  | 提测 |  |
| 137 | 2.4.2 | **附近频道** |  | 2d | 2016-03-23 | 2016-03-24 |  | 5d |  |  | 32h |
| 138 | 2.4.2.1 | 逻辑 |  | 2d | 2016-03-23 | 2016-03-24 |  | 44d |  | 李冬冬 | 16h |
| 139 | 2.4.2.2 | UI |  | 2d | 2016-03-23 | 2016-03-24 |  | 5d | 0d | 申艳丽 | 16h |
| 140 | 2.4.2.3 | 提测 | milestone | 0d | 2016-03-24 | 2016-03-24 | 138, 139 | 44d |  | 提测 |  |
| 141 | 2.5 | **家园图纸抽奖优化+外观一键拆解** |  | 10d? | 2016-03-23 | 2016-04-05 |  | 36d |  |  | 176h |
| 142 | 2.5.1 | **逻辑** |  | 6d | 2016-03-23 | 2016-03-30 |  | 39d | 0d |  | 48h |
| 143 | 2.5.1.1 | 需分、设计 |  | 1d | 2016-03-23 | 2016-03-23 |  | 39d | 0d | 陈晓宇 | 8h |
| 144 | 2.5.1.2 | 保底奖池 |  | 2d | 2016-03-24 | 2016-03-25 | 143 | 39d | 0d | 陈晓宇 | 16h |
| 145 | 2.5.1.3 | 主打显示配置，奖励详情配置，系列外观封面 |  | 2d | 2016-03-28 | 2016-03-29 | 144 | 39d | 0d | 陈晓宇 | 16h |
| 146 | 2.5.1.4 | 一键分解 |  | 1d | 2016-03-30 | 2016-03-30 | 145 | 39d |  | 陈晓宇 | 8h |
| 147 | 2.5.2 | **UI** |  | 8d? | 2016-03-23 | 2016-04-01 |  | 36d |  |  | 88h |
| 148 | 2.5.2.1 | 需分、设计 |  | 1d? | 2016-03-23 | 2016-03-23 |  | 40d | 0d | 吴鹏 | 8h |
| 149 | 2.5.2.2 | 需分、设计 |  | 1d? | 2016-03-24 | 2016-03-24 | 134 | 36d | 0d | 祁媛媛 | 8h |
| 150 | 2.5.2.3 | 高级图纸 |  | 2d | 2016-03-24 | 2016-03-25 | 148 | 40d | 0d | 吴鹏 | 16h |
| 151 | 2.5.2.4 | 奖励详情 |  | 1d | 2016-03-28 | 2016-03-28 | 150 | 40d | 0d | 吴鹏 | 8h |
| 152 | 2.5.2.5 | 普通图纸 |  | 2d | 2016-03-25 | 2016-03-28 | 149 | 36d | 0d | 祁媛媛 | 16h |
| 153 | 2.5.2.6 | 兑换 |  | 2d | 2016-03-29 | 2016-03-30 | 152 | 36d | 0d | 祁媛媛 | 16h |
| 154 | 2.5.2.7 | 一键分解 |  | 2d | 2016-03-31 | 2016-04-01 | 153 | 36d | 0d | 祁媛媛 | 16h |
| 155 | 2.5.3 | 联调 |  | 1d | 2016-03-31 | 2016-03-31 | 142 | 39d | 3d | 陈晓宇 | 8h |
| 156 | 2.5.4 | 联调 |  | 2d | 2016-03-29 | 2016-03-30 | 151 | 40d | 4d | 吴鹏 | 16h |
| 157 | 2.5.5 | 联调 |  | 2d | 2016-04-04 | 2016-04-05 | 154 | 36d | 0d | 祁媛媛 | 16h |
| 158 | 2.5.6 | 提测 | milestone | 0d | 2016-04-05 | 2016-04-05 | 156, 157, 155 | 36d |  | 提测 |  |

| ID | WBS | Task | Type | Duration | Start | Finish | Predecessors | Total slack | Free slack | Constraint | Resources | Work |
| --- | --- | --- | --- | --- | --- | --- | --- | --- | --- | --- | --- | --- |
| 159 | 2.6 | **更新宠物技能开发** |  | 3d | 2016-03-28 | 2016-03-30 |  | 35d |  |  |  | 24h |
| 160 | 2.6.1 | 逻辑 |  | 3d | 2016-03-28 | 2016-03-30 | 4 | 35d | 0d |  | 卢洋洋 | 24h |
| 161 | 2.6.2 | 提测 | milestone | 0d | 2016-03-30 | 2016-03-30 | 160 | 40d |  |  | 提测 |  |
| 162 | 2.7 | **其他** |  | 18d | 2016-03-23 | 2016-04-15 |  | 28d |  |  |  |  |
| 163 | 2.7.1 | 闪耀人生 |  | 1d | 2016-03-23 | 2016-03-23 |  | 45d |  |  |  |  |
| 164 | 2.7.2 | 称号 |  | 1d | 2016-03-23 | 2016-03-23 |  | 45d |  |  |  |  |
| 165 | 2.7.3 | OSS-IDIP需求 | milestone | 0d | 2016-04-14 | 2016-04-14 |  | 28d | 0d | start no earlier than 2016-04-14 |  |  |
| 166 | 2.7.4 | OSS-跨区组队跑环一期 |  | 2d | 2016-04-14 | 2016-04-15 | 165 | 28d |  |  |  |  |
| 167 | 2.7.5 | OSS-飞檐走壁 |  | 1d | 2016-04-14 | 2016-04-14 | 165 | 29d |  |  |  |  |
| 168 | 2.7.6 | OSS-周年庆回馈活动 |  | 2d | 2016-04-14 | 2016-04-15 | 165 | 28d |  |  |  |  |
| 169 | 2.7.7 | IDIP |  | 2d | 2016-04-14 | 2016-04-15 | 165 | 28d |  |  |  |  |
| 170 | 2.8 | **手机社区** |  | 17d? | 2016-03-23 | 2016-04-14 |  | 29d |  |  |  | 40h |
| 171 | 2.8.1 | **双端聊天（未确认）** |  | 17d | 2016-03-23 | 2016-04-14 |  | 29d |  |  |  |  |
| 172 | 2.8.1.1 | 逻辑 |  | 17d | 2016-03-23 | 2016-04-14 |  | 29d |  |  |  |  |
| 173 | 2.8.1.2 | Android |  | 5d | 2016-03-23 | 2016-03-29 |  | 41d |  |  |  |  |
| 174 | 2.8.2 | **信鸽优化（未确认）** |  | 5d | 2016-03-23 | 2016-03-29 |  | 41d |  |  |  | 16h |
| 175 | 2.8.2.1 | 逻辑 |  | 5d | 2016-03-23 | 2016-03-29 |  | 41d |  |  |  |  |
| 176 | 2.8.2.2 | Android |  | 2d | 2016-03-23 | 2016-03-24 |  | 44d |  |  | 杨煜 | 16h |
| 177 | 2.8.3 | **挂机优化（未确认）** |  | 1d? | 2016-03-23 | 2016-03-23 |  | 45d |  |  |  |  |
| 178 | 2.8.3.1 | 逻辑 |  | 1d? | 2016-03-23 | 2016-03-23 |  | 45d |  |  |  |  |
| 179 | 2.8.3.2 | Android |  | 1d? | 2016-03-23 | 2016-03-23 |  | 45d |  |  |  |  |
| 180 | 2.8.4 | **优化** |  | 5d | 2016-03-23 | 2016-03-29 |  | 41d |  |  |  | 24h |
| 181 | 2.8.4.1 | 移动网络连接失败问题 |  | 5d | 2016-03-23 | 2016-03-29 |  | 41d |  |  |  |  |
| 182 | 2.8.4.2 | dump和兼容性问题 |  | 3d | 2016-03-23 | 2016-03-25 |  | 43d |  |  | 杨煜 | 24h |
| 183 | 2.9 | PTR | milestone | 0d | 2016-04-26 | 2016-04-26 |  | 0d |  | must finish on 2016-04-26 |  |  |

| ID | WBS | Task | Type | Duration | Start | Finish | Predecessors | Total slack | Constraint | Resources | Work |
| --- | --- | --- | --- | --- | --- | --- | --- | --- | --- | --- | --- |
| 184 | 3 | **6月版本** |  | 25d | 2016-03-23 | 2016-04-27 |  | 21d |  |  |  |
| 185 | 3.1 | 版本开始时间 | milestone | 0d | 2016-04-27 | 2016-04-27 |  | 0d | must start on 2016-04-27 |  |  |
| 186 | 3.2 | **局内玩法整合** |  | 17d | 2016-03-23 | 2016-04-14 |  | 29d |  |  |  |
| 187 | 3.2.1 | 逻辑1 |  | 17d | 2016-03-23 | 2016-04-14 |  | 29d |  |  |  |
| 188 | 4 | **7月版本** |  | 46d? | 2016-03-23 | 2016-05-26 |  | 0d |  |  | 272h |
| 189 | 4.1 | 版本开始时间 | milestone | 0d | 2016-05-26 | 2016-05-26 |  | 0d | must start on 2016-05-26 |  |  |
| 190 | 4.2 | **跨服情缘** |  | 20d? | 2016-03-23 | 2016-04-19 |  | 26d |  |  | 272h |
| 191 | 4.2.1 | 逻辑1 |  | 17d | 2016-03-28 | 2016-04-19 | 2 | 26d |  | 黄梓洲 | 136h |
| 192 | 4.2.2 | 3D1 |  | 17d | 2016-03-23 | 2016-04-14 |  | 29d |  | 岳文铎 | 136h |
