Schedule from MS Project, 2016-04-08 to 2016-05-25, A marks actual dates.

## Calendars

- 标准: Mon-Fri 08:00-12:00, 13:00-17:00; Sat-Sun off. Exceptions (off unless hours are given): 2016-05-02.

## Resources

| Resource | Group |
| --- | --- |
| 朱雷 | 逻辑2 |
| 刘彦鹏 | 逻辑2 |
| 岳文铎 | UI |
| 杨立坤 | 逻辑1 |
| 李冬冬 | 逻辑1 |
| 崔顺利 | 逻辑1 |
| 杨煜 | 逻辑2 |
| 助手 |  |
| 提测 |  |
| 童瑞 | 逻辑2 |
| 黄梓洲 | 逻辑1 |
| 卢洋洋 | 逻辑1 |
| 刘存明 | 逻辑1 |
| 产品 |  |
| 夏润凉 | UI |
| 杨力 | UI |
| 祁媛媛 | UI |
| 钟兴志 | UI |
| 申艳丽 | UI |
| 吴鹏 | UI |
| 骆天宇 | UI |
| 裴希凯 | 组长 |
| 刘涛 | 组长 |
| 白盒 |  |
| 陈晓宇 | 逻辑2 |
| 陈军 | 组长 |
| 胡勤伟 | 逻辑2 |
| 郭兴宇 |  |
| 陈利泉 |  |
| 陈晓宇u |  |
| 李文仙 |  |
| 崔顺 |  |
| 路村名 |  |
| 112 |  |
| 王志 |  |
| 王志【50%】 |  |

## Schedule

| ID | WBS | Task | Type | Duration | Start | Finish | Predecessors | Complete | Remaining | Total slack | Free slack | Constraint | Resources | Work | Actual work |
| --- | --- | --- | --- | --- | --- | --- | --- | --- | --- | --- | --- | --- | --- | --- | --- |
| 1 | 1 | **优化** |  | 19d | 2016-04-25 A | 2016-05-20 |  | 5% | 18.05d | 3d |  |  |  | 160h | 8h |
| 2 | 1.1 | **编译时间优化** |  | 1d | 2016-04-26 A | 2016-04-26 A |  | 100% |  |  |  |  |  | 8h | 8h |
| 3 | 1.1.1 | 整理常见编译问题 |  | 1d | 2016-04-26 A | 2016-04-26 A |  | 100% |  |  |  | start no earlier than 2016-04-26 | 陈军 | 8h | 8h |
| 4 | 1.2 | **客户端内存优化** |  | 19d | 2016-04-25 | 2016-05-20 |  |  |  | 3d |  | start no earlier than 2016-03-31 |  | 152h |  |
| 5 | 1.2.1 | 社区内存占用分析 |  | 1d | 2016-04-25 | 2016-04-25 |  |  |  | 3d | 0d | start no earlier than 2016-04-25 | 刘涛 | 8h |  |
| 6 | 1.2.2 | 社区15人内存占用分析 |  | 1d | 2016-04-26 | 2016-04-26 | 5 |  |  | 3d | 0d | start no earlier than 2016-03-23 | 刘涛 | 8h |  |
| 7 | 1.2.3 | 优化方案 |  | 1d | 2016-04-27 | 2016-04-27 | 6 |  |  | 3d | 0d |  | 刘涛 | 8h |  |
| 8 | 1.2.4 | 集成新引擎后内存测试 |  | 2d | 2016-04-28 | 2016-04-29 | 7 |  |  | 3d | 0d | start no earlier than 2016-03-25 | 刘涛 | 16h |  |
| 9 | 1.2.5 | 物品系统内存优化 |  | 3d | 2016-05-03 | 2016-05-05 | 8 |  |  | 3d | 0d |  | 刘涛 | 24h |  |
| 10 | 1.2.6 | 新旧社区寻路优化 |  | 3d | 2016-05-06 | 2016-05-10 | 9 |  |  | 3d | 0d |  | 刘涛 | 24h |  |
| 11 | 1.2.7 | 解决内存泄露 |  | 3d | 2016-05-11 | 2016-05-13 | 10 |  |  | 3d | 0d |  | 刘涛 | 24h |  |
| 12 | 1.2.8 | 完善离开时清理 |  | 5d | 2016-05-16 | 2016-05-20 | 11 |  |  | 3d |  |  | 刘涛 | 40h |  |
| 13 | 2 | **5月版本剩余工作** |  | 3d | 2016-04-25 A | 2016-04-27 |  | 33% | 2d | 19d |  | start no earlier than 2016-04-25 |  | 72h | 24h |
| 14 | 2.1 | 组队白盒测试 |  | 3d | 2016-04-25 | 2016-04-27 |  |  |  | 19d |  |  | 崔顺利 | 24h |  |
| 15 | 2.2 | 周年庆摇奖白盒测试 |  | 2d | 2016-04-25 A | 2016-04-26 |  | 50% | 1d | 20d |  |  | 朱雷 | 16h | 8h |
| 16 | 2.3 | QA、Bug |  | 2d | 2016-04-25 A | 2016-04-26 |  | 50% | 1d | 20d |  |  | 刘彦鹏 | 16h | 8h |
| 17 | 2.4 | QA、Bug |  | 2d | 2016-04-25 A | 2016-04-26 |  | 50% | 1d | 20d |  |  | 黄梓洲 | 16h | 8h |
| 18 | 3 | **6月版本** |  | 20d? | 2016-04-27 | 2016-05-25 |  |  |  | 0d |  | start no earlier than 2016-04-27 |  | 1876h |  |
| 19 | 3.1 | 版本开始时间 | milestone | 0d | 2016-04-27 | 2016-04-27 |  |  |  | 0d |  | must start on 2016-04-27 |  |  |  |
| 20 | 3.2 | **大富翁寻宝活动（陈军）** |  | 15.5d? | 2016-04-27 | 2016-05-19 |  |  |  | 3d |  |  |  | 656h |  |
| 21 | 3.2.1 | **玩法** |  | 15.5d | 2016-04-27 | 2016-05-19 |  |  |  | 3d | 0d |  |  | 424h |  |
| 22 | 3.2.1.1 | **UI** |  | 7d | 2016-04-29 | 2016-05-10 |  |  |  | 7d | 3d |  |  | 120h |  |
| 23 | 3.2.1.1.1 | 需分设计 |  | 2d | 2016-04-29 | 2016-05-03 |  |  |  | 8d | 0d | start no earlier than 2016-04-29 | 申艳丽 | 16h |  |
| 24 | 3.2.1.1.2 | 富翁榜需分设计及代码熟悉 |  | 2d | 2016-04-29 | 2016-05-03 |  |  |  | 8d | 0d | start no earlier than 2016-04-29 | 李文仙 | 16h |  |
| 25 | 3.2.1.1.3 | 主界面：棋盘格子，我的信息，活动介绍 |  | 3d | 2016-05-04 | 2016-05-06 | 23 |  |  | 7d | 0d |  | 申艳丽 | 24h |  |
| 26 | 3.2.1.1.4 | 棋盘格子tips窗口 |  | 2d | 2016-05-04 | 2016-05-05 | 24 |  |  | 8d | 0d |  | 申艳丽 | 16h |  |
| 27 | 3.2.1.1.5 | 主界面：排行榜及富翁钱袋 |  | 2d | 2016-05-09 | 2016-05-10 | 25 |  |  | 7d |  |  | 申艳丽 | 16h |  |
| 28 | 3.2.1.1.6 | 浮框及特效 |  | 2d | 2016-05-06 | 2016-05-09 | 26 |  |  | 8d | 4d |  | 申艳丽 | 16h |  |
| 29 | 3.2.1.1.7 | 富翁榜 |  | 2d | 2016-05-04 | 2016-05-05 | 24 |  |  | 10d | 6d |  | 李文仙 | 16h |  |

| ID | WBS | Task | Duration | Start | Finish | Predecessors | Total slack | Free slack | Resources | Work |
| --- | --- | --- | --- | --- | --- | --- | --- | --- | --- | --- |
| 30 | 3.2.1.2 | **逻辑** | 12d | 2016-04-27 | 2016-05-14 |  | 3d | 0d |  | 208h |
| 31 | 3.2.1.2.1 | 需分设计，Bug | 4d | 2016-04-27 | 2016-04-30 |  | 3d | 0d | 杨立坤 | 32h |
| 32 | 3.2.1.2.2 | **主流程** | 4d | 2016-05-03 | 2016-05-07 |  | 4d |  |  | 40h |
| 33 | 3.2.1.2.2.1 | 接口、配置 | 2d | 2016-05-03 | 2016-05-04 | 31 | 3d | 0d | 杨立坤 | 16h |
| 34 | 3.2.1.2.2.2 | 棋盘、掷骰子、前进、后退 | 1d | 2016-05-05 | 2016-05-05 | 33 | 3d | 0d | 杨立坤 | 8h |
| 35 | 3.2.1.2.2.3 | 触发时间、触发buff、终点 | 1d | 2016-05-06 | 2016-05-06 | 34 | 3d | 0d | 杨立坤 | 8h |
| 36 | 3.2.1.2.2.4 | 读写进度 | 1d | 2016-05-07 | 2016-05-07 | 35 | 3d | 0d | 杨立坤 | 8h |
| 37 | 3.2.1.2.3 | **事件** | 5d | 2016-05-09 | 2016-05-14 |  | 4d |  |  | 64h |
| 38 | 3.2.1.2.3.1 | 随机过程 | 1d | 2016-05-09 | 2016-05-09 | 36 | 3d | 0d |  |  |
| 39 | 3.2.1.2.3.2 | 事件：1、2、3 | 1d | 2016-05-10 | 2016-05-10 | 38 | 3.5d | 0d | 杨立坤 | 8h |
| 40 | 3.2.1.2.3.3 | 事件：4、5、6、7 | 1d | 2016-05-11 | 2016-05-11 | 39 | 3.5d | 0d | 杨立坤 | 8h |
| 41 | 3.2.1.2.3.4 | **事件8：开启本大区e分钟的双倍活动** | 2d | 2016-05-12 | 2016-05-14 |  | 3.5d |  |  | 32h |
| 42 | 3.2.1.2.3.4.1 | 基本结构 | 1d | 2016-05-12 | 2016-05-12 | 40 | 3.5d | 0d | 杨立坤 | 8h |
| 43 | 3.2.1.2.3.4.2 | 大区限量 | 1d | 2016-05-13 | 2016-05-13 | 42 | 3.5d | 0d | 杨立坤 | 8h |
| 44 | 3.2.1.2.3.4.3 | 双倍经验 | 0.5d | 2016-05-14 | 2016-05-14 | 43 | 3.5d |  | 杨立坤 | 4h |
| 45 | 3.2.1.2.3.4.4 | 双倍GB | 0.5d | 2016-05-13 | 2016-05-13 | 48 | 3.5d | 0d | 李冬冬 | 4h |
| 46 | 3.2.1.2.3.4.5 | 双倍宠物经验 | 0.5d | 2016-05-13 | 2016-05-13 | 45 | 3.5d | 0d | 李冬冬 | 4h |
| 47 | 3.2.1.2.3.4.6 | 双倍舞团资源 | 0.5d | 2016-05-14 | 2016-05-14 | 46 | 3.5d |  | 李冬冬 | 4h |
| 48 | 3.2.1.2.3.5 | 事件9：自己和家族好友都获得奖励 | 2d | 2016-05-11 | 2016-05-12 | 39 | 3.5d | 0d | 李冬冬 | 16h |
| 49 | 3.2.1.2.4 | **BUFF** | 3d | 2016-05-07 | 2016-05-11 |  | 5d |  |  | 32h |
| 50 | 3.2.1.2.4.1 | buff基础结构（获取、使用、超时、存储） | 2d | 2016-05-07 | 2016-05-09 | 74 | 4d | 0d | 朱雷 | 16h |
| 51 | 3.2.1.2.4.2 | buff1 | 0.5d | 2016-05-10 | 2016-05-10 | 50 | 4d | 0d | 朱雷 | 4h |
| 52 | 3.2.1.2.4.3 | buff2 | 0.5d | 2016-05-10 | 2016-05-10 | 51 | 4d | 0d | 朱雷 | 4h |
| 53 | 3.2.1.2.4.4 | buff3 | 1d | 2016-05-11 | 2016-05-11 | 52 | 4d | 0d | 朱雷 | 8h |

| ID | WBS | Task | Duration | Start | Finish | Predecessors | Total slack | Free slack | Constraint | Resources | Work |
| --- | --- | --- | --- | --- | --- | --- | --- | --- | --- | --- | --- |
| 54 | 3.2.1.2.5 | **奖励** | 4d | 2016-05-05 | 2016-05-10 |  | 6d |  |  |  | 40h |
| 55 | 3.2.1.2.5.1 | 接口、配置 | 1d | 2016-05-05 | 2016-05-05 | 75 | 5d | 0d |  | 童瑞 | 8h |
| 56 | 3.2.1.2.5.2 | 终点奖励 | 1d | 2016-05-06 | 2016-05-06 | 55 | 5d | 0d |  | 童瑞 | 8h |
| 57 | 3.2.1.2.5.3 | 固定奖励 | 1d | 2016-05-07 | 2016-05-07 | 56 | 5d | 0d |  | 童瑞 | 8h |
| 58 | 3.2.1.2.5.4 | 随机奖励 | 1d | 2016-05-09 | 2016-05-09 | 57 | 6d | 0d |  | 童瑞 | 8h |
| 59 | 3.2.1.2.5.5 | 奖励加成 | 1d | 2016-05-10 | 2016-05-10 | 58 | 6d | 0d |  | 童瑞 | 8h |
| 60 | 3.2.1.3 | **联调** | 3.5d | 2016-05-14 | 2016-05-19 | 22, 30 | 4d |  |  |  | 96h |
| 61 | 3.2.1.3.1 | 逻辑联调 | 4d | 2016-05-14 | 2016-05-19 |  | 4d |  |  | 杨立坤 | 32h |
| 62 | 3.2.1.3.2 | 逻辑联调 | 1d | 2016-05-14 | 2016-05-16 |  | 7d |  |  | 朱雷 | 8h |
| 63 | 3.2.1.3.3 | 逻辑联调 | 1d | 2016-05-16 | 2016-05-16 |  | 7d |  |  | 童瑞 | 8h |
| 64 | 3.2.1.3.4 | UI联调 | 4d | 2016-05-14 | 2016-05-19 | 28 | 4d |  |  | 申艳丽 | 32h |
| 65 | 3.2.1.3.5 | UI联调 | 2d | 2016-05-16 | 2016-05-17 | 29 | 6d |  |  | 李文仙 | 16h |
| 66 | 3.2.2 | **周边** | 14d? | 2016-04-27 | 2016-05-17 |  | 6d | 1.5d |  |  | 232h |
| 67 | 3.2.2.1 | **UI** | 2d? | 2016-05-06 | 2016-05-09 |  | 10d | 5d |  |  |  |
| 68 | 3.2.2.1.1 | 入口 | 1d? | 2016-05-06 | 2016-05-06 | 121 | 8d | 0d |  |  |  |
| 69 | 3.2.2.1.2 | 各种弹框及回流buff | 1d? | 2016-05-09 | 2016-05-09 | 68 | 8d |  |  |  |  |
| 70 | 3.2.2.2 | **逻辑** | 12d | 2016-04-27 | 2016-05-13 |  | 6d | 0d |  |  | 184h |
| 71 | 3.2.2.2.1 | 需分、设计，Bug（3） | 5d | 2016-04-27 | 2016-05-03 |  | 4d | 0d |  | 朱雷 | 40h |
| 72 | 3.2.2.2.2 | 需分、设计 | 2d | 2016-04-29 | 2016-05-03 |  | 5d | 0d | start no earlier than 2016-04-29 | 童瑞 | 16h |
| 73 | 3.2.2.2.3 | 接口、配置 | 1d | 2016-05-04 | 2016-05-04 | 71 | 4d | 0d |  | 朱雷 | 8h |
| 74 | 3.2.2.2.4 | 活动周期 | 2d | 2016-05-05 | 2016-05-06 | 73 | 4d | 0d |  | 朱雷 | 16h |
| 75 | 3.2.2.2.5 | 接口、配置 | 1d | 2016-05-04 | 2016-05-04 | 72 | 5d | 0d |  | 童瑞 | 8h |
| 76 | 3.2.2.2.6 | **筛子机会** | 4d | 2016-05-10 | 2016-05-13 |  | 6d |  |  |  | 48h |
| 77 | 3.2.2.2.6.1 | 数值存取、每日清空 | 1d | 2016-05-12 | 2016-05-12 | 53 | 4d | 0d |  | 朱雷 | 8h |
| 78 | 3.2.2.2.6.2 | 上限控制 | 1d | 2016-05-13 | 2016-05-13 | 77 | 4d | 0d |  | 朱雷 | 8h |
| 79 | 3.2.2.2.6.3 | 每日登陆 | 1d | 2016-05-10 | 2016-05-10 | 75, 86 | 6d | 0d |  | 胡勤伟 | 8h |
| 80 | 3.2.2.2.6.4 | 活跃度 | 1d | 2016-05-11 | 2016-05-11 | 79 | 6d | 0d |  | 胡勤伟 | 8h |
| 81 | 3.2.2.2.6.5 | 梦工厂献花 | 1d | 2016-05-12 | 2016-05-12 | 80 | 6d | 0d |  | 胡勤伟 | 8h |
| 82 | 3.2.2.2.6.6 | 与回流玩家对局 | 1d | 2016-05-13 | 2016-05-13 | 81 | 6d | 0d |  | 胡勤伟 | 8h |

| ID | WBS | Task | Type | Duration | Start | Finish | Predecessors | Total slack | Free slack | Constraint | Resources | Work |
| --- | --- | --- | --- | --- | --- | --- | --- | --- | --- | --- | --- | --- |
| 83 | 3.2.2.2.7 | **筹码** |  | 6d | 2016-05-05 | 2016-05-12 |  | 6d |  |  |  | 40h |
| 84 | 3.2.2.2.7.1 | 筹码 |  | 1d | 2016-05-11 | 2016-05-11 | 59 | 6d | 0d |  | 童瑞 | 8h |
| 85 | 3.2.2.2.7.2 | 筹码奖励 |  | 1d | 2016-05-12 | 2016-05-12 | 84 | 6d | 0d |  | 童瑞 | 8h |
| 86 | 3.2.2.2.7.3 | 排行榜 |  | 3d | 2016-05-05 | 2016-05-09 | 129 | 10d | 0d |  | 胡勤伟 | 24h |
| 87 | 3.2.2.2.8 | 任务 |  | 2d | 2016-05-11 | 2016-05-12 | 217 | 5d | 0d | start no earlier than 2016-05-09 | 王志 [50%] | 8h |
| 88 | 3.2.2.3 | **联调** |  | 2d | 2016-05-14 | 2016-05-17 | 67, 70 | 6d |  |  |  | 48h |
| 89 | 3.2.2.3.1 | 逻辑联调 |  | 2d | 2016-05-14 | 2016-05-16 | 82 | 6d |  |  | 朱雷 | 16h |
| 90 | 3.2.2.3.2 | 逻辑联调 |  | 2d | 2016-05-16 | 2016-05-17 | 87 | 6d |  |  | 童瑞 | 16h |
| 91 | 3.2.2.3.3 | UI联调 |  | 2d | 2016-05-16 | 2016-05-17 | 69 | 6d |  |  | 吴鹏 | 16h |
| 92 | 3.2.3 | 提测 | milestone | 0d | 2016-05-19 | 2016-05-19 | 21, 66 | 4.5d |  |  | 提测 |  |
| 93 | 3.3 | **抽奖宝箱优化（陈军）** |  | 2.5d | 2016-04-27 | 2016-04-29 |  | 17d |  |  |  | 32h |
| 94 | 3.3.1 | 逻辑 |  | 1d | 2016-04-28 | 2016-04-28 |  | 16d | 0d | start no earlier than 2016-04-28 | 陈晓宇 | 8h |
| 95 | 3.3.2 | **UI** |  | 2d | 2016-04-27 | 2016-04-28 |  | 17.5d |  |  |  | 16h |
| 96 | 3.3.2.1 | 需分、设计 |  | 1d | 2016-04-27 | 2016-04-27 |  | 17.5d | 0d |  | 陈利泉 | 8h |
| 97 | 3.3.2.2 | 开发 |  | 1d | 2016-04-28 | 2016-04-28 | 96 | 17.5d | 0d |  | 陈利泉 | 8h |
| 98 | 3.3.3 | **联调** |  | 0.5d | 2016-04-29 | 2016-04-29 |  | 17.5d | 0d |  |  | 8h |
| 99 | 3.3.3.1 | 逻辑联调 |  | 0.5d | 2016-04-29 | 2016-04-29 | 94, 97 | 17.5d |  |  | 陈晓宇 | 4h |
| 100 | 3.3.3.2 | UI联调 |  | 0.5d | 2016-04-29 | 2016-04-29 | 97, 94 | 17.5d |  |  | 陈利泉 | 4h |
| 101 | 3.3.4 | 提测 | milestone | 0d | 2016-04-29 | 2016-04-29 | 98 | 17.5d |  |  | 提测 |  |
| 102 | 3.4 | **家园旧皮肤打包+免费皮肤抽奖优化（陈军）** |  | 2d | 2016-04-29 | 2016-05-03 |  | 16d |  |  |  | 32h |
| 103 | 3.4.1 | 逻辑 |  | 2d | 2016-04-29 | 2016-05-03 | 94 | 16d | 0d |  | 陈晓宇 | 16h |
| 104 | 3.4.2 | UI |  | 2d | 2016-04-29 | 2016-05-03 |  | 16d | 0d | start no earlier than 2016-04-29 | 祁媛媛 | 16h |
| 105 | 3.4.3 | 提测 | milestone | 0d | 2016-05-03 | 2016-05-03 | 103, 104 | 16d |  |  | 提测 |  |
| 106 | 3.5 | **星光藏宝阁优化（刘涛）** |  | 4d | 2016-04-27 | 2016-05-03 |  | 7d |  |  |  | 48h |
| 107 | 3.5.1 | 逻辑 |  | 1d | 2016-04-28 | 2016-04-28 |  | 10d | 0d | start no earlier than 2016-04-28 | 胡勤伟 | 8h |

| ID | WBS | Task | Type | Duration | Start | Finish | Predecessors | Total slack | Free slack | Resources | Work |
| --- | --- | --- | --- | --- | --- | --- | --- | --- | --- | --- | --- |
| 108 | 3.5.2 | **UI** |  | 3d | 2016-04-27 | 2016-04-29 |  | 16d |  |  | 24h |
| 109 | 3.5.2.1 | 需分、设计 |  | 1d | 2016-04-27 | 2016-04-27 |  | 16d | 0d | 郭兴宇 | 8h |
| 110 | 3.5.2.2 | 开发 |  | 1d | 2016-04-28 | 2016-04-28 | 109 | 16d | 0d | 郭兴宇 | 8h |
| 111 | 3.5.2.3 | 联调 |  | 1d | 2016-04-29 | 2016-04-29 | 110 | 16d | 0d | 郭兴宇 | 8h |
| 112 | 3.5.3 | **联调** |  | 1d | 2016-05-03 | 2016-05-03 |  | 16d | 0d |  | 16h |
| 113 | 3.5.3.1 | 逻辑联调 |  | 1d | 2016-05-03 | 2016-05-03 | 107, 111 | 16d |  | 胡勤伟 | 8h |
| 114 | 3.5.3.2 | UI联调 |  | 1d | 2016-05-03 | 2016-05-03 | 111, 107 | 16d |  | 郭兴宇 | 8h |
| 115 | 3.5.4 | 提测 | milestone | 0d | 2016-05-03 | 2016-05-03 | 112 | 16d |  | 提测 |  |
| 116 | 3.6 | **游戏内喇叭选择可视功能（刘涛）** |  | 6d | 2016-04-27 | 2016-05-05 |  | 10d |  |  | 48h |
| 117 | 3.6.1 | **UI** |  | 6d | 2016-04-27 | 2016-05-05 |  | 10d |  |  | 48h |
| 118 | 3.6.1.1 | 需分设计 |  | 1d | 2016-04-27 | 2016-04-27 |  | 10d | 0d | 吴鹏 | 8h |
| 119 | 3.6.1.2 | 局内聊天处理、F3规则 |  | 2d | 2016-04-28 | 2016-04-29 | 118 | 10d | 0d | 吴鹏 | 16h |
| 120 | 3.6.1.3 | 其他场景聊天处理 |  | 2d | 2016-05-03 | 2016-05-04 | 119 | 10d | 0d | 吴鹏 | 16h |
| 121 | 3.6.1.4 | 自测 |  | 1d | 2016-05-05 | 2016-05-05 | 120 | 10d | 0d | 吴鹏 | 8h |
| 122 | 3.6.2 | 提测 | milestone | 0d | 2016-05-05 | 2016-05-05 | 121 | 14d |  | 提测 |  |
| 123 | 3.7 | **内嵌消费页面（刘涛）** |  | 7d | 2016-04-27 | 2016-05-06 |  | 8d |  |  | 64h |
| 124 | 3.7.1 | 逻辑 |  | 2d | 2016-04-29 | 2016-05-03 | 107 | 10d | 0d | 胡勤伟 | 16h |
| 125 | 3.7.2 | **UI** |  | 2d | 2016-04-27 | 2016-04-28 |  | 8d | 2d |  | 16h |
| 126 | 3.7.2.1 | 需分、设计 |  | 1d | 2016-04-27 | 2016-04-27 |  | 12d | 0d | 陈利泉 | 8h |
| 127 | 3.7.2.2 | 开发 |  | 1d | 2016-04-28 | 2016-04-28 | 126 | 12d | 2d | 陈利泉 | 8h |
| 128 | 3.7.3 | **联调** |  | 3d | 2016-05-04 | 2016-05-06 |  | 6d | 0d |  | 32h |
| 129 | 3.7.3.1 | 逻辑联调 |  | 1d | 2016-05-04 | 2016-05-04 | 127, 124 | 10d | 0d | 胡勤伟 | 8h |
| 130 | 3.7.3.2 | UI联调 |  | 1d | 2016-05-04 | 2016-05-04 | 125, 124 | 13d | 0d | 陈利泉 | 8h |
| 131 | 3.7.3.3 | 和腾讯页面联调 |  | 2d | 2016-05-05 | 2016-05-06 | 130 | 13d |  | 陈利泉 | 16h |
| 132 | 3.7.4 | 提测 | milestone | 0d | 2016-05-06 | 2016-05-06 | 128 | 13d |  | 提测 |  |

| ID | WBS | Task | Duration | Start | Finish | Predecessors | Total slack | Free slack | Constraint | Resources | Work |
| --- | --- | --- | --- | --- | --- | --- | --- | --- | --- | --- | --- |
| 133 | 3.8 | **音乐精灵（陈军）** | 20d | 2016-04-27 | 2016-05-25 |  | 0d |  |  |  | 844h |
| 134 | 3.8.1 | **对局玩法调整** | 12d | 2016-04-28 | 2016-05-16 |  | 6d | 2d |  |  | 120h |
| 135 | 3.8.1.1 | 需分、设计 | 3d | 2016-04-28 | 2016-04-30 |  | 6d | 0d | start no earlier than 2016-04-28 | 刘彦鹏 | 24h |
| 136 | 3.8.1.2 | 对局展示调整 | 4d | 2016-05-03 | 2016-05-06 | 135 | 5d | 0d |  | 刘彦鹏 | 32h |
| 137 | 3.8.1.3 | 任务条件通知 | 2d | 2016-05-07 | 2016-05-09 | 136 | 5d | 0d |  | 刘彦鹏 | 16h |
| 138 | 3.8.1.4 | **转转乐触发事件** | 3d | 2016-05-10 | 2016-05-12 |  | 6d |  |  |  | 24h |
| 139 | 3.8.1.4.1 | 系统丢出道具 | 3d | 2016-05-10 | 2016-05-12 | 137 | 6d | 0d |  | 刘彦鹏 | 24h |
| 140 | 3.8.1.5 | 效果联调 | 3d | 2016-05-13 | 2016-05-16 | 139 | 6d |  |  | 刘彦鹏 | 24h |
| 141 | 3.8.2 | **主流程** | 12d | 2016-04-27 | 2016-05-13 |  | 0d |  |  |  | 112h |
| 142 | 3.8.2.1 | 需分、设计 | 3d | 2016-04-27 | 2016-04-29 |  | 0d |  | start no earlier than 2016-04-27 | 崔顺利 | 24h |
| 143 | 3.8.2.2 | 接口、配置 | 1d | 2016-04-30 | 2016-04-30 | 142 | 0d |  |  | 崔顺利 | 8h |
| 144 | 3.8.2.3 | **活动** | 3d | 2016-05-03 | 2016-05-05 |  | 0d |  |  |  | 24h |
| 145 | 3.8.2.3.1 | 活动周期 | 2d | 2016-05-03 | 2016-05-04 | 143 | 0d |  |  | 崔顺利 | 16h |
| 146 | 3.8.2.3.2 | 活动开启、关闭时的处理 | 1d | 2016-05-05 | 2016-05-05 | 145 | 0d |  |  | 崔顺利 | 8h |
| 147 | 3.8.2.4 | 组队调整 | 2d | 2016-05-06 | 2016-05-07 | 146 | 0d |  |  | 崔顺利 | 16h |
| 148 | 3.8.2.5 | 开始、结束对局 | 4d | 2016-05-09 | 2016-05-12 | 147 | 0d |  |  | 崔顺利 | 32h |
| 149 | 3.8.2.6 | 非功能性处理 | 1d | 2016-05-13 | 2016-05-13 | 148 | 0d |  |  | 崔顺利 | 8h |
| 150 | 3.8.3 | **关卡** | 11d | 2016-05-03 | 2016-05-17 |  | 4d | 1d |  |  | 152h |
| 151 | 3.8.3.1 | 需分、设计 | 2d | 2016-05-03 | 2016-05-04 |  | 4d | 0d | start no earlier than 2016-05-03 | 陈晓宇 | 16h |
| 152 | 3.8.3.2 | 接口、配置 | 1d | 2016-05-05 | 2016-05-05 | 151 | 4d | 0d |  | 陈晓宇 | 8h |
| 153 | 3.8.3.3 | 关卡框架：模式、歌曲、条件 | 2d | 2016-05-06 | 2016-05-07 | 152 | 4d | 0d |  | 陈晓宇 | 16h |
| 154 | 3.8.3.4 | **完成条件** | 4d | 2016-05-09 | 2016-05-12 |  | 4d |  |  |  | 32h |
| 155 | 3.8.3.4.1 | 条件1 | 1d | 2016-05-09 | 2016-05-09 | 153 | 4d | 0d |  | 陈晓宇 | 8h |
| 156 | 3.8.3.4.2 | 条件2 | 1d | 2016-05-10 | 2016-05-10 | 155 | 4d | 0d |  | 陈晓宇 | 8h |
| 157 | 3.8.3.4.3 | 条件3 | 1d | 2016-05-11 | 2016-05-11 | 156 | 4d | 0d |  | 陈晓宇 | 8h |
| 158 | 3.8.3.4.4 | 条件4 | 1d | 2016-05-12 | 2016-05-12 | 157 | 4d | 0d |  | 陈晓宇 | 8h |
| 159 | 3.8.3.5 | 关卡奖励 | 1d | 2016-05-13 | 2016-05-13 | 158 | 4d | 0d |  | 陈晓宇 | 8h |

| ID | WBS | Task | Duration | Start | Finish | Predecessors | Total slack | Free slack | Constraint | Resources | Work |
| --- | --- | --- | --- | --- | --- | --- | --- | --- | --- | --- | --- |
| 160 | 3.8.3.6 | **局内UI** | 5d | 2016-05-03 | 2016-05-09 |  | 9d |  |  |  | 40h |
| 161 | 3.8.3.6.1 | 需分设计 | 2d | 2016-05-03 | 2016-05-04 |  | 9d | 0d | start no earlier than 2016-05-03 | 钟兴志 | 16h |
| 162 | 3.8.3.6.2 | 开发 | 3d | 2016-05-05 | 2016-05-09 | 161 | 9d | 4d |  | 钟兴志 | 24h |
| 163 | 3.8.3.7 | **联调** | 2d | 2016-05-14 | 2016-05-17 |  | 5d |  |  |  | 32h |
| 164 | 3.8.3.7.1 | 逻辑联调 | 2d | 2016-05-14 | 2016-05-16 | 159, 162 | 5d | 0d |  | 陈晓宇 | 16h |
| 165 | 3.8.3.7.2 | UI联调 | 2d | 2016-05-16 | 2016-05-17 | 159, 162 | 6d |  |  | 钟兴志 | 16h |
| 166 | 3.8.4 | **音乐转盘** | 8d | 2016-04-27 | 2016-05-09 |  | 3d |  |  |  | 140h |
| 167 | 3.8.4.1 | **局内逻辑和UI** | 7d | 2016-04-27 | 2016-05-06 |  | 3d |  |  |  | 64h |
| 168 | 3.8.4.1.1 | 需分、设计 | 3d | 2016-04-27 | 2016-04-29 |  | 3d | 0d |  | 李冬冬 | 24h |
| 169 | 3.8.4.1.2 | 调整结构支持新老转盘 | 2d | 2016-04-30 | 2016-05-03 | 168 | 3d | 0d |  | 李冬冬 | 16h |
| 170 | 3.8.4.1.3 | 转盘逻辑 | 1d | 2016-05-04 | 2016-05-04 | 169 | 3d | 0d |  | 李冬冬 | 8h |
| 171 | 3.8.4.1.4 | 转盘表现 | 2d | 2016-05-05 | 2016-05-06 | 170 | 3d | 0d |  | 李冬冬 | 16h |
| 172 | 3.8.4.2 | **局外逻辑** | 4.5d | 2016-04-27 | 2016-05-04 |  | 5.5d |  |  |  | 44h |
| 173 | 3.8.4.2.1 | 需分、设计 | 2d | 2016-04-27 | 2016-04-28 |  | 5d | 0d |  | 刘存明 | 16h |
| 174 | 3.8.4.2.2 | 事件概率、奖励配置 | 1d | 2016-04-29 | 2016-04-29 | 173 | 4.5d | 0d |  | 刘存明 | 8h |
| 175 | 3.8.4.2.3 | 屏蔽原转转乐 | 0.5d | 2016-04-30 | 2016-04-30 | 174 | 4.5d | 0d |  | 刘存明 | 4h |
| 176 | 3.8.4.2.4 | 传入参数、结算 | 1d | 2016-04-30 | 2016-05-03 | 175 | 5d | 0d |  | 刘存明 | 8h |
| 177 | 3.8.4.2.5 | 奖励随机规则和发放 | 1d | 2016-05-03 | 2016-05-04 | 176 | 5.5d | 2.5d |  | 刘存明 | 8h |
| 178 | 3.8.4.3 | **联调** | 1d | 2016-05-07 | 2016-05-09 |  | 3d |  |  |  | 32h |
| 179 | 3.8.4.3.1 | 逻辑联调 | 2d | 2016-05-07 | 2016-05-09 | 171, 177 | 3d | 0d |  | 刘存明 | 16h |
| 180 | 3.8.4.3.2 | UI联调 | 2d | 2016-05-07 | 2016-05-09 | 171, 177 | 11d |  |  | 李冬冬 | 16h |
| 181 | 3.8.5 | **周边** | 7d | 2016-05-10 | 2016-05-18 |  | 4d | 0d |  |  | 72h |
| 182 | 3.8.5.1 | **奖励** | 3d | 2016-05-14 | 2016-05-18 | 172 | 4d |  |  |  | 32h |
| 183 | 3.8.5.1.1 | 关卡每日奖励 | 2d | 2016-05-14 | 2016-05-16 | 159 | 4d | 0d |  | 陈晓宇 | 16h |
| 184 | 3.8.5.1.2 | 对局回流奖励 | 2d | 2016-05-17 | 2016-05-18 | 183 | 5d |  |  | 陈晓宇 | 16h |

| ID | WBS | Task | Type | Duration | Start | Finish | Predecessors | Total slack | Free slack | Constraint | Resources | Work |
| --- | --- | --- | --- | --- | --- | --- | --- | --- | --- | --- | --- | --- |
| 185 | 3.8.5.2 | **任务BUFF** |  | 5d | 2016-05-10 | 2016-05-16 |  | 4d |  |  |  | 40h |
| 186 | 3.8.5.2.1 | 配置、框架 |  | 2d | 2016-05-10 | 2016-05-11 | 179 | 4d | 0d |  | 刘存明 | 16h |
| 187 | 3.8.5.2.2 | 普通Buff效果（金钱、经验、P倍物品） |  | 2d | 2016-05-12 | 2016-05-13 | 186 | 4d | 0d |  | 刘存明 | 16h |
| 188 | 3.8.5.2.3 | 回流Buff（领奖、保存状态） |  | 1d | 2016-05-16 | 2016-05-16 | 187 | 7d |  |  | 刘存明 | 8h |
| 189 | 3.8.6 | **联调** |  | 5d | 2016-05-11 | 2016-05-17 |  | 3d | 1d |  |  | 88h |
| 190 | 3.8.6.1 | UI联调 |  | 3d | 2016-05-11 | 2016-05-13 | 208 | 8d |  |  | 夏润凉 | 24h |
| 191 | 3.8.6.2 | UI联调 |  | 3d | 2016-05-11 | 2016-05-13 | 207 | 8d |  |  | 杨煜 | 24h |
| 192 | 3.8.6.3 | 逻辑联调 |  | 1d | 2016-05-17 | 2016-05-17 | 164 | 6d |  |  | 陈晓宇 | 8h |
| 193 | 3.8.6.4 | 逻辑联调 |  | 3d | 2016-05-14 | 2016-05-17 | 149 | 0d |  |  | 崔顺利 | 24h |
| 194 | 3.8.6.5 | 逻辑联调 |  | 1d | 2016-05-16 | 2016-05-16 | 187 | 4d | 0d |  | 刘存明 | 8h |
| 195 | 3.8.7 | 白盒 |  | 6d | 2016-05-18 | 2016-05-25 | 193 | 0d |  |  | 崔顺利 | 48h |
| 196 | 3.8.8 | **局外UI** |  | 7d | 2016-04-29 | 2016-05-10 |  | 8d |  | start no earlier than 2016-04-29 |  | 112h |
| 197 | 3.8.8.1 | 需分、设计 |  | 2d | 2016-04-29 | 2016-05-03 |  | 8d | 0d |  | 夏润凉 | 16h |
| 198 | 3.8.8.2 | 需分、设计 |  | 2d | 2016-04-29 | 2016-05-03 |  | 8d | 0d |  | 杨煜 | 16h |
| 199 | 3.8.8.3 | 入口界面修改 |  | 0.5d | 2016-05-04 | 2016-05-04 | 198 | 8d | 0d |  | 杨煜 | 4h |
| 200 | 3.8.8.4 | 成员列表 |  | 2d | 2016-05-04 | 2016-05-05 | 197 | 8d | 0d |  | 夏润凉 | 16h |
| 201 | 3.8.8.5 | 队伍列表 |  | 0.5d | 2016-05-06 | 2016-05-06 | 200 | 8d | 0d |  | 夏润凉 | 4h |
| 202 | 3.8.8.6 | 场景站位 |  | 0.5d | 2016-05-06 | 2016-05-06 | 201 | 8d | 0d |  | 夏润凉 | 4h |
| 203 | 3.8.8.7 | 功能提示入口 |  | 1.5d | 2016-05-09 | 2016-05-10 | 202 | 8d | 0d |  | 夏润凉 | 12h |
| 204 | 3.8.8.8 | 奖励查看 |  | 1d | 2016-05-04 | 2016-05-05 | 199 | 8d | 0d |  | 杨煜 | 8h |
| 205 | 3.8.8.9 | 关卡选择 |  | 2d | 2016-05-05 | 2016-05-09 | 204 | 8d | 0d |  | 杨煜 | 16h |
| 206 | 3.8.8.10 | 音乐打造界面 |  | 0.5d | 2016-05-09 | 2016-05-09 | 205 | 8d | 0d |  | 杨煜 | 4h |
| 207 | 3.8.8.11 | 提示文字修改 |  | 1d | 2016-05-10 | 2016-05-10 | 206 | 8d | 0d |  | 杨煜 | 8h |
| 208 | 3.8.8.12 | 队伍频道判断修改 |  | 0.5d | 2016-05-10 | 2016-05-10 | 203 | 8d | 0d |  | 夏润凉 | 4h |
| 209 | 3.8.9 | 提测 | milestone | 0d | 2016-05-18 | 2016-05-18 | 134, 141, 150, 166, 181, 189 | 5d |  |  | 提测 |  |

| ID | WBS | Task | Type | Duration | Start | Finish | Predecessors | Complete | Remaining | Total slack | Free slack | Constraint | Resources | Work | Actual work |
| --- | --- | --- | --- | --- | --- | --- | --- | --- | --- | --- | --- | --- | --- | --- | --- |
| 210 | 3.9 | **视频游戏侧任务条件（PK）** |  | 3d | 2016-05-17 | 2016-05-19 |  |  |  | 4d |  |  |  | 24h |  |
| 211 | 3.9.1 | 开发 |  | 2d | 2016-05-17 | 2016-05-18 | 194 |  |  | 4d | 0d |  | 刘存明 | 16h |  |
| 212 | 3.9.2 | 联调 |  | 1d | 2016-05-19 | 2016-05-19 | 211 |  |  | 4d | 0d |  | 刘存明 | 8h |  |
| 213 | 3.9.3 | 提测 | milestone | 0d | 2016-05-19 | 2016-05-19 | 212 |  |  | 4d |  |  | 提测 |  |  |
| 214 | 3.10 | **其他** |  | 15d | 2016-04-27 | 2016-05-18 |  |  |  | 5d |  |  |  | 128h |  |
| 215 | 3.10.1 | Dress.xml（待定） |  | 4d | 2016-04-27 | 2016-04-30 |  |  |  | 16d |  |  | 钟兴志 | 32h |  |
| 216 | 3.10.2 | 闪耀人生 |  | 2d | 2016-05-16 | 2016-05-17 | 82 |  |  | 6d |  |  | 胡勤伟 | 16h |  |
| 217 | 3.10.3 | 称号 |  | 4d | 2016-05-05 | 2016-05-10 |  |  |  | 11d |  | start no earlier than 2016-05-05 | 王志 [50%] | 16h |  |
| 218 | 3.10.4 | **运营需求** |  | 5d | 2016-05-12 | 2016-05-18 |  |  |  | 5d |  | start no earlier than 2016-05-12 |  | 64h |  |
| 219 | 3.10.4.1 | OSS-大富翁 |  | 2d | 2016-05-13 | 2016-05-16 | 87 |  |  | 5d | 0d |  | 王志 | 16h |  |
| 220 | 3.10.4.2 | OSS-音乐转盘玩法模式 |  | 2d | 2016-05-17 | 2016-05-18 | 219 |  |  | 5d |  |  | 王志 | 16h |  |
| 221 | 3.10.4.3 | OSS-内嵌消费页面 |  | 2d | 2016-05-12 | 2016-05-13 |  |  |  | 8d |  |  | 胡勤伟 | 16h |  |
| 222 | 3.10.4.4 | IDIP |  | 2d | 2016-05-12 | 2016-05-13 |  |  |  | 8d |  |  | 李冬冬 | 16h |  |
| 223 | 3.11 | PTR | milestone | 0d | 2016-05-24 | 2016-05-24 |  |  |  | 0d |  | must finish on 2016-05-24 |  |  |  |
| 224 | 4 | **7月版本** |  | 20d | 2016-04-08 A | 2016-05-06 |  | 57% | 8.69d | 13d |  |  |  | 232h | 131.2h |
| 225 | 4.1 | **跨服情缘** |  | 20d | 2016-04-08 A | 2016-05-06 |  | 57% | 8.69d | 13d |  |  |  | 232h | 131.2h |
| 226 | 4.1.1 | 概要设计(脚本系统） |  | 4d | 2016-04-08 A | 2016-04-13 A |  | 100% |  |  |  | start no earlier than 2016-04-08 | 裴希凯 | 32h | 32h |
| 227 | 4.1.2 | **3D1** |  | 16d | 2016-04-14 A | 2016-05-06 |  | 50% | 8.06d | 13d |  |  |  | 200h | 99.2h |
| 228 | 4.1.2.1 | 剧本结构搭建 |  | 3d | 2016-04-14 A | 2016-04-16 |  | 80% | 0.6d | 27d |  | start no earlier than 2016-04-14 | 岳文铎 | 24h | 19.2h |
| 229 | 4.1.2.2 | **剧本基础（关键效果相关支持及验证--demo_0） client** |  | 6d | 2016-04-18 A | 2016-04-25 |  | 88% | 0.75d | 21d |  |  |  | 64h | 56h |
| 230 | 4.1.2.2.1 | 位移控制 |  | 2d | 2016-04-18 A | 2016-04-19 A | 228 | 100% |  |  |  |  | 岳文铎 | 16h | 16h |
| 231 | 4.1.2.2.2 | 玩家动作（包括交互） |  | 2d | 2016-04-22 A | 2016-04-25 A | 233 | 100% |  |  |  |  | 岳文铎 | 16h | 16h |
| 232 | 4.1.2.2.3 | 座驾 |  | 2d | 2016-04-19 A | 2016-04-20 A | 230 | 100% |  |  |  |  | 岳文铎 | 16h | 16h |
| 233 | 4.1.2.2.4 | 相机 |  | 2d | 2016-04-21 A | 2016-04-22 | 232 | 50% | 1d | 22.5d |  |  | 岳文铎 | 16h | 8h |
| 234 | 4.1.2.3 | 队形 |  | 3d | 2016-04-26 | 2016-04-28 | 231 |  |  | 18d |  |  | 岳文铎 | 24h |  |
| 235 | 4.1.2.4 | chr动作+位移控制 |  | 2d | 2016-04-28 A | 2016-04-29 A | 234 | 100% |  |  |  |  | 岳文铎 | 16h | 16h |
| 236 | 4.1.2.5 | 场景特效 |  | 1d | 2016-04-21 A | 2016-04-21 A |  | 100% |  |  |  |  | 黄梓洲 | 8h | 8h |
| 237 | 4.1.2.6 | actor交互特效 |  | 1d | 2016-04-30 | 2016-04-30 | 235 |  |  | 12d | 0d |  | 岳文铎 | 8h |  |
| 238 | 4.1.2.7 | UI支持(界面显示隐藏，2D特效) |  | 1d | 2016-04-21 | 2016-04-22 | 236 |  |  | 20d | 0d |  | 黄梓洲 | 8h |  |
| 239 | 4.1.2.8 | 声音 |  | 1d | 2016-04-22 | 2016-04-25 | 238 |  |  | 20.5d | 0d |  | 黄梓洲 | 8h |  |
| 240 | 4.1.2.9 | Talk |  | 1d | 2016-04-25 | 2016-04-26 | 239 |  |  | 20.5d |  |  | 黄梓洲 | 8h |  |
| 241 | 4.1.2.10 | 剧本结构完善 |  | 2d | 2016-05-03 | 2016-05-04 | 237 |  |  | 13d | 0d |  | 岳文铎 | 16h |  |
| 242 | 4.1.2.11 | 剧本调优 |  | 2d | 2016-05-05 | 2016-05-06 | 241 |  |  | 13d |  |  | 岳文铎 | 16h |  |
